Schedule from MS Project, 2017-03-31 to 2017-06-09, costs in R$, A marks actual dates.
Microsoft

## Calendars

- Padrão: Mon-Fri 09:00-12:00, 13:00-18:00; Sat-Sun off.

## Resources

| Resource | Cost per use |
| --- | --- |
| Fábio | 3802.99 |
| João | 3802.99 |
| Rafael | 3802.99 |
| Cliente |  |
| Notebook João |  |
| Notebook Fábio |  |
| Bruno | 3802.99 |
| Notebook Bruno |  |
| Notebook Rafael |  |
| Notebook Cliente |  |

## Schedule

| ID | WBS | Task | Type | Duration | Start | Finish | Predecessors | Complete | Remaining | Actual start | Actual finish | Baseline start | Baseline finish | Baseline duration | Total slack | Resources | Work | Actual work | Cost | Actual cost |
| --- | --- | --- | --- | --- | --- | --- | --- | --- | --- | --- | --- | --- | --- | --- | --- | --- | --- | --- | --- | --- |
| 1 | 1 | **Projeto** |  | 51d | 2017-03-31 A | 2017-06-09 |  | 98% | 1.21d |  |  | 2017-03-31 | 2017-06-09 | 51d | 0d |  | 1536h | 1480h | 65,791.73 | 50,579.77 |
| 2 | 1.1 | **Atividade Prática 2** |  | 47d | 2017-03-31 A | 2017-06-05 A |  | 100% |  |  |  | 2017-03-31 | 2017-04-27 | 20d |  |  | 648h | 648h | 15,211.96 | 15,211.96 |
| 3 | 1.1.1 | Elicitação de Requisitos | manual | 15d | 2017-03-31 A | 2017-04-20 A |  | 100% |  |  |  | 2017-03-31 | 2017-04-07 | 6d |  | Fábio; João; Rafael; Cliente; Notebook João | 600h | 600h | 11,408.97 | 11,408.97 |
| 4 | 1.1.2 | Diagrama de Casos de Uso | manual | 3d | 2017-04-27 A | 2017-05-01 A | 3 | 100% |  |  |  | 2017-04-10 | 2017-04-12 | 3d |  | Fábio; Notebook Fábio | 48h | 48h | 3,802.99 | 3,802.99 |
| 5 | 1.1.3 | Documento de especificação | milestone, manual | 0d | 2017-06-05 A | 2017-06-05 A |  | 100% |  |  |  | 2017-04-27 | 2017-04-27 |  |  |  |  |  |  |  |
| 6 | 1.1.4 | Documento de especificação suplementar | milestone, manual | 0d | 2017-06-05 A | 2017-06-05 A |  | 100% |  |  |  | 2017-04-27 | 2017-04-27 |  |  |  |  |  |  |  |
| 7 | 1.2 | **Atividade Prática 3** |  | 20d | 2017-04-28 | 2017-05-25 A |  | 100% |  | 2017-05-01 |  | 2017-04-28 | 2017-05-11 | 10d |  |  | 240h | 240h | 11,408.97 | 11,408.97 |
| 8 | 1.2.1 | Diagrama de Fluxo de Dados | manual | 8d | 2017-05-01 A | 2017-05-10 A | 3 | 100% |  |  |  | 2017-04-28 | 2017-05-03 | 4d |  | João; Notebook João | 128h | 128h | 3,802.99 | 3,802.99 |
| 9 | 1.2.2 | Pesquisa de média salarial | manual | 1d | 2017-05-17 A | 2017-05-17 A |  | 100% |  |  |  | 2017-05-03 | 2017-05-03 | 1d |  | Notebook Bruno; Bruno | 16h | 16h | 3,802.99 | 3,802.99 |
| 10 | 1.2.3 | Métrica Ponto de Função | manual | 6d | 2017-05-18 A | 2017-05-25 A | 8 | 100% |  |  |  | 2017-05-04 | 2017-05-10 | 5d |  | Notebook Bruno; Bruno | 96h | 96h | 3,802.99 | 3,802.99 |
| 11 | 1.3 | **Atividade Prática 4** |  | 21d | 2017-05-12 | 2017-06-09 |  | 100% |  | 2017-05-18 | 2017-06-06 | 2017-05-12 | 2017-06-09 | 21d |  |  | 201.6h | 201.6h | 5,514.34 | 5,514.34 |
| 12 | 1.3.1 | Grafico de Gantt | manual | 10d | 2017-05-24 A | 2017-06-06 A |  | 100% |  |  |  | 2017-05-12 | 2017-06-08 | 20d |  | João [50%]; Fábio [10%]; Notebook João [50%] | 88h | 88h | 2,281.79 | 2,281.79 |
| 13 | 1.3.2 | Grafico de Gantt de Controle | manual | 8d | 2017-05-26 A | 2017-06-06 A | 12SS+2d | 100% |  |  |  | 2017-05-16 | 2017-06-08 | 18d |  | João [35%]; Fábio [10%]; Notebook João [35%] | 51.2h | 51.2h | 1,711.35 | 1,711.35 |
| 14 | 1.3.3 | Diagrama de Rede | milestone, manual | 0d | 2017-06-06 A | 2017-06-06 A |  | 100% |  |  |  | 2017-06-06 | 2017-06-06 |  |  | João [10%]; Notebook João |  |  | 380.3 | 380.3 |
| 15 | 1.3.4 | Lista e informações sobre riscos | manual | 6d | 2017-05-18 A | 2017-05-25 A |  | 100% |  |  |  | 2017-05-12 | 2017-05-18 | 5d |  | Rafael [30%]; Notebook Rafael | 62.4h | 62.4h | 1,140.9 | 1,140.9 |
| 16 | 1.3.5 | Documento de Planejamento e Acompanhamento | milestone, manual | 0d | 2017-06-05 A | 2017-06-05 A |  | 100% |  |  |  | 2017-05-19 | 2017-05-19 | 0d |  |  |  |  |  |  |
| 17 | 1.4 | **Atividade Prática 5** |  | 10d | 2017-05-19 | 2017-06-01 A |  | 100% |  | 2017-05-15 |  | 2017-05-19 | 2017-05-31 | 9d |  |  | 358.4h | 358.4h | 10,838.52 | 10,838.52 |
| 18 | 1.4.1 | Protótipos da interface do sistema | manual | 6d | 2017-05-19 A | 2017-05-26 A |  | 100% |  |  |  | 2017-05-19 | 2017-05-19 | 1d |  | Rafael [15%]; Notebook Rafael; João [5%]; Notebook João [5%] | 60h | 60h | 760.6 | 760.6 |
| 19 | 1.4.2 | Codificação do sistema | manual | 14d | 2017-05-15 A | 2017-06-01 A | 18SS+2d | 100% |  |  |  | 2017-05-23 | 2017-05-31 | 7d |  | Rafael [85%]; Notebook Rafael | 207.2h | 207.2h | 3,232.54 | 3,232.54 |
| 20 | 1.4.3 | Manual do Usuário | manual | 3d | 2017-05-29 A | 2017-05-31 A | 18 | 100% |  |  |  | 2017-05-22 | 2017-05-22 | 1d |  | Bruno; Fábio [80%]; Notebook Bruno; Notebook Fábio | 91.2h | 91.2h | 6,845.38 | 6,845.38 |
| 21 | 1.5 | **Atividade Prática 6** |  | 11d | 2017-05-26 | 2017-06-09 |  | 50% | 5.5d | 2017-06-02 |  | 2017-05-26 | 2017-06-09 | 11d |  |  | 88h | 32h | 22,817.94 | 7,605.98 |
| 22 | 1.5.1 | Plano de Teste | manual | 1d | 2017-06-02 A | 2017-06-02 A | 19 | 100% |  |  |  | 2017-06-01 | 2017-06-01 | 1d |  | Bruno; Notebook Bruno | 16h | 16h | 3,802.99 | 3,802.99 |
| 23 | 1.5.2 | Testes Funcionais | manual | 1d | 2017-06-05 A | 2017-06-05 A | 22 | 100% |  |  |  | 2017-06-02 | 2017-06-05 | 2d |  | Rafael; Notebook Rafael | 16h | 16h | 3,802.99 | 3,802.99 |
| 24 | 1.5.3 | Teste Beta | manual | 1d | 2017-06-07 | 2017-06-07 | 23 |  |  |  |  | 2017-06-07 | 2017-06-07 | 1d |  | Cliente; Notebook Cliente | 16h |  |  |  |
| 25 | 1.5.4 | Homologação | manual | 1d | 2017-06-09 | 2017-06-09 |  |  |  |  |  | 2017-06-09 | 2017-06-09 | 1d |  | Cliente; Bruno; Fábio; João; Rafael | 40h |  | 15,211.96 |  |
